# MacroWeldingAdminApp

How a schedule from MS Project changed from version to version. A marks actual dates.

## Version 1 (saved 2019-05-29)

Note of the change: E2 phase plan added

| ID | WBS | Task | Duration | Start | Finish | Predecessors | Total float |
| --- | --- | --- | --- | --- | --- | --- | --- |
| 1 | 1 | **Create Admin Support Application** | 9.75d? | 2019-04-30 10:30 | 2019-06-12 15:00 |  | 0d |
| 2 | 1.1 | **Inception** | 2d | 2019-04-30 10:30 | 2019-05-08 10:30 |  | 0d |
| 3 |  | Preliminary meeting with project sponsor | 2h | 2019-04-30 10:30 | 2019-04-30 12:30 |  | 0d |
| 4 |  | Summary memo from preliminary meeting | 4h | 2019-05-01 08:30 | 2019-05-01 12:30 | 3 | 0d |
| 5 |  | Create phase plan | 2h | 2019-05-02 08:30 | 2019-05-02 10:30 | 3, 4 | 0d |
| 6 |  | Create detailed Inception iteration plan | 2h | 2019-05-02 10:30 | 2019-05-02 12:30 | 3, 4, 5 | 0d |
| 7 |  | Create Vision Document | 1h | 2019-05-06 10:30 | 2019-05-06 11:30 | 6 | 8.38d |
| 8 |  | Create Use Case Skeletons for 2 highest priority use cases | 1h | 2019-05-06 10:30 | 2019-05-06 11:30 | 6 | 0d |
| 9 |  | Initial Business Rules | 1h | 2019-05-06 11:30 | 2019-05-06 12:30 | 8 | 0d |
| 10 |  | Initial Glossary | 1h | 2019-05-06 11:30 | 2019-05-06 12:30 | 8 | 0d |
| 11 |  | Define non-functional specs | 1h | 2019-05-06 11:30 | 2019-05-06 12:30 | 8 | 0d |
| 12 |  | Get feedback from client on vision doc | 2h | 2019-05-07 10:30 | 2019-05-07 12:30 | 9, 10, 11 | 0d |
| 13 |  | Get feedback from client on Bus. Rules, glossary and non-functional specs | 2h | 2019-05-08 08:30 | 2019-05-08 10:30 | 9, 10, 11, 12 | 7.75d |
| 14 |  | Create detailed E1 iteration plan | 1h | 2019-05-08 08:30 | 2019-05-08 09:30 | 12 | 0d |
| 15 |  | Inception complete | 0d | 2019-05-08 10:30 | 2019-05-08 10:30 | 13 | 7.75d |
| 16 | 1.2 | **Elaboration** | 6.88d? | 2019-05-08 09:30 | 2019-06-07 17:00 | 14 | 0d |
| 17 | 1.2.1 | **Elaboration Iteration 1** | 5.94d? | 2019-05-08 09:30 | 2019-05-30 17:00 |  |  |
| 18 |  | Create detailed use cases for E1 | 2h | 2019-05-09 08:00 | 2019-05-09 10:00 |  |  |
| 19 |  | Update Business rules | 1h | 2019-05-10 08:00 | 2019-05-10 09:00 |  |  |
| 20 |  | UML diagrams | 2h | 2019-05-10 08:00 | 2019-05-10 10:00 |  |  |
| 21 |  | N-tier diagrams | 1h | 2019-05-10 08:00 | 2019-05-10 09:00 |  |  |
| 22 |  | Class diagrams | 1.62d | 2019-05-24 08:00 | 2019-05-28 17:00 |  |  |
| 23 |  | Update Vision Document | 1h | 2019-05-13 08:00 | 2019-05-13 09:00 |  |  |
| 24 |  | Update Glossary | 15min | 2019-05-13 08:00 | 2019-05-13 08:15 |  |  |
| 25 |  | Create first ERD | 2h | 2019-05-27 08:00 | 2019-05-27 10:00 |  |  |
| 26 |  | E1 front ends coded | 2h | 2019-05-28 08:00 | 2019-05-28 10:00 |  |  |
| 27 |  | E1 Client walkthrough | 1h | 2019-05-30 08:00 | 2019-05-30 09:00 |  |  |
| 28 |  | Document client correspondence for E1 | 1d? | 2019-05-30 08:00 | 2019-06-04 12:00 |  |  |
| 29 |  | Project fixes based on E1 client feedback | 1d? | 2019-05-30 08:00 | 2019-06-04 12:00 |  |  |
| 30 |  | Create detailed E2 iteration plan | 1d? | 2019-05-30 08:00 | 2019-06-04 12:00 |  |  |
| 31 |  | E1 complete | 0d | 2019-05-30 08:00 | 2019-05-30 08:00 |  |  |
| 32 | 1.2.2 | **Elaboration Iteration 2** | 2.62d | 2019-06-03 08:00 | 2019-06-07 17:00 | 31 |  |
| 33 |  | Create detailed use cases for E2 | 1h | 2019-06-03 08:00 | 2019-06-03 09:00 |  |  |
| 34 |  | Update Business rules, Vision Document, and Glossary for E2 | 1h | 2019-06-03 08:00 | 2019-06-03 09:00 |  |  |
| 35 |  | UML diagrams update for E2 | 1h | 2019-06-03 10:30 | 2019-06-03 11:30 | 33, 34 |  |
| 36 |  | Update ERD | 1h | 2019-06-03 11:30 | 2019-06-03 12:30 | 35 |  |
| 37 |  | E2 front ends coded | 1h | 2019-06-04 10:30 | 2019-06-04 11:30 | 36 |  |
| 38 |  | E2 client walkthrough | 1h | 2019-06-04 11:30 | 2019-06-04 12:30 | 37 |  |
| 39 |  | Document client correspondence for E2 | 1d | 2019-06-05 08:00 | 2019-06-06 12:00 |  |  |
| 40 |  | Project fixes based on E2 client feedback | 1h | 2019-06-05 08:30 | 2019-06-05 09:30 | 38 |  |
| 41 |  | E2 complete | 0d | 2019-06-07 08:00 | 2019-06-07 08:00 | 40 |  |
| 42 | 1.3 | **Transition** | 1.62d? | 2019-06-10 08:00 | 2019-06-12 15:00 |  |  |
| 43 |  | Final Document submission | 1d? | 2019-06-10 08:00 | 2019-06-12 10:00 |  |  |
| 44 |  | Transition complete | 0d | 2019-06-12 08:00 | 2019-06-12 08:00 |  |  |

## Version 2 (saved 2019-06-07)

Note of the change: C1 Phase plan

Last finish stays 2019-06-12.

Added:

| ID | Task | Duration | Start | Finish | Predecessors | Resources |
| --- | --- | --- | --- | --- | --- | --- |
| 42 | **Construction** | 0.94d | 2019-06-10 08:00 | 2019-06-12 12:00 |  |  |
| 43 | **Construction Iteration 1** | 0.94d | 2019-06-10 08:00 | 2019-06-12 12:00 |  |  |
| 44 | Update Business rules, Vision Document, and Glossary for C1 | 1h | 2019-06-10 08:00 | 2019-06-10 09:00 |  | Ben |
| 45 | UML diagrams update for C1 | 1h | 2019-06-10 10:30 | 2019-06-10 11:30 | 44 | Ben; Mike |
| 46 | Update ERD | 1h | 2019-06-10 11:30 | 2019-06-10 12:30 | 45 | Mike |
| 47 | All front ends coded | 1h | 2019-06-11 10:30 | 2019-06-11 11:30 | 46 | Mathieu; Mike |
| 48 | Functioning release of working components from C1 | 2h | 2019-06-11 11:30 | 2019-06-12 09:30 | 47 | Ben; Mathieu; Mike |
| 49 | C1 Client walkthrough | 1h | 2019-06-12 09:30 | 2019-06-12 10:30 | 48 | Ben; Mathieu; Mike |
| 50 | Document client correspondence for C1 | 0.5h | 2019-06-12 10:30 | 2019-06-12 11:00 | 49 | Ben |
| 51 | Project fixes based on C1 client feedback | 1h | 2019-06-12 11:00 | 2019-06-12 12:00 | 50 | Ben; Mathieu; Mike |
| 52 | C1 complete | 0d | 2019-06-12 12:00 | 2019-06-12 12:00 | 51 |  |

## Version 3 (saved 2019-06-09)

Note of the change: final stuff

Last finish stays 2019-06-12.

Changed:

| ID | Task | Start | Finish | Duration |
| --- | --- | --- | --- | --- |
| 16 | **Elaboration** | 2019-05-08 09:30 → 2019-05-09 08:00 (+1d) |  | 6.88d? → 6.5d? |
| 17 | **Elaboration Iteration 1** | 2019-05-08 09:30 → 2019-05-09 08:00 (+1d) |  | 5.94d? → 5.62d? |
| 28 | Document client correspondence for E1 |  | 2019-06-04 12:00 → 2019-05-30 08:30 (-5d) | 1d? → 30min |
| 29 | Project fixes based on E1 client feedback |  | 2019-06-04 12:00 → 2019-05-30 08:30 (-5d) | 1d? → 30min |
| 30 | Create detailed E2 iteration plan |  | 2019-06-04 12:00 → 2019-05-30 08:30 (-5d) | 1d? → 30min |
